Unique ID,Task Name,Start,Finish,Duration (mins),% Complete,Predecessors,Summary,Baseline Start,Baseline Finish
2,Mobilisation,2026-01-05,2026-01-07,1440,100,,0,2026-01-05,2026-01-07
3,Groundworks,2026-01-08,2026-01-14,3360,40,2FS,0,2026-01-08,2026-01-13
4,Superstructure,2026-01-15,2026-01-23,4320,15,3FS,0,2026-01-15,2026-01-22
5,Commissioning,2026-01-26,2026-01-30,2400,0,4FS,0,2026-01-26,2026-01-29
