Unique ID,Task Name,Start,Finish,Duration (mins),% Complete,Predecessors,Summary,Baseline Start,Baseline Finish
111,Mobilisation,2026-01-05,2026-01-08,1920,100,,0,2026-01-05,2026-01-07
112,Site investigation,2026-01-09,2026-01-12,1920,60,111FS,0,2026-01-09,2026-01-12
113,Groundworks,2026-01-13,2026-01-21,3840,30,112FS,0,2026-01-08,2026-01-13
114,Superstructure,2026-01-22,2026-02-04,5760,5,113FS,0,2026-01-15,2026-01-22
